# Final_Project

Schedule from MS Project, 2023-08-07 to 2024-10-22, costs in $.

## Calendars

- Standard: Mon-Fri 08:00-12:00, 13:00-17:00; Sat-Sun off.

## Resources

| Resource | Rate |
| --- | --- |
| Project Manager | 90 |
| Backend Software Developers | 55 |
| Frontend Software Developers | 45 |
| UI/UX Designers | 45 |
| Accounting Team | 75 |
| Entrepreneurship Team | 60 |
| Guides Team | 30 |
| News Team | 30 |
| Payments Team | 40 |
| Third-Party Advertisers | 60 |
| Board of Directors | 110 |
| Testing Team | 40 |
| Marketing Team | 30 |
| Usability Testers | 28 |
| Financial Experts | 90 |
| Legal and Compliance Team | 90 |
| Security Experts | 80 |
| Market Research | 40 |
| Logistics Team | 40 |

## Schedule

| ID | WBS | Task | Type | Duration | Start | Finish | Predecessors | Total slack | Resources | Work | Cost |
| --- | --- | --- | --- | --- | --- | --- | --- | --- | --- | --- | --- |
| 1 | 1 | **Develop Wave Apps Business Software** |  | 317d | 2023-08-07 | 2024-10-22 |  | 0d |  | 4727.5h | 287,099 |
| 2 | 1.1 | **Initiating** |  | 16d | 2023-08-07 | 2023-08-28 |  | 0d |  | 128h | 11,520 |
| 3 | 1.1.1 | Identify stakeholders |  | 8d | 2023-08-07 | 2023-08-16 |  | 0d | Project Manager | 64h | 5,760 |
| 4 | 1.1.2 | Develop project charter |  | 7d | 2023-08-17 | 2023-08-25 | 3 | 0d | Project Manager | 56h | 5,040 |
| 5 | 1.1.3 | Hold kick-off meeting |  | 1d | 2023-08-28 | 2023-08-28 | 4 | 0d | Project Manager | 8h | 720 |
| 6 | 1.2 | **Planning** |  | 113d | 2023-08-29 | 2024-02-01 | 2 | 0d |  | 1080h | 92,400 |
| 7 | 1.2.1 | Develop project management plans |  | 3d | 2023-08-29 | 2023-08-31 | 5 | 0d | Project Manager | 24h | 2,160 |
| 8 | 1.2.2 | Plan scope management |  | 12d | 2023-09-01 | 2023-09-18 | 7 | 0d | Project Manager | 96h | 8,640 |
| 9 | 1.2.3 | Gather requirements |  | 12d | 2023-09-19 | 2023-10-04 | 8 | 0d | Project Manager; Market Research | 192h | 12,480 |
| 10 | 1.2.4 | Develop a scope statement |  | 4d | 2023-10-05 | 2023-10-10 | 9 | 0d | Project Manager | 32h | 2,880 |
| 11 | 1.2.5 | Develop a WBS |  | 7d | 2023-10-11 | 2023-10-19 | 10 | 0d | Project Manager | 56h | 5,040 |
| 12 | 1.2.6 | Plan schedule management |  | 4d | 2023-10-20 | 2023-10-25 | 11 | 0d | Project Manager | 32h | 2,880 |
| 13 | 1.2.7 | Define activities |  | 7d | 2023-10-26 | 2023-11-03 | 12 | 0d | Project Manager | 56h | 5,040 |
| 14 | 1.2.8 | Sequence activities |  | 6d | 2023-11-06 | 2023-11-13 | 13 | 0d | Project Manager | 48h | 4,320 |
| 15 | 1.2.9 | Estimate activity durations |  | 3d | 2023-11-14 | 2023-11-16 | 14 | 0d | Project Manager | 24h | 2,160 |
| 16 | 1.2.10 | Develop a schedule |  | 6d | 2023-11-17 | 2023-11-24 | 15 | 0d | Project Manager | 48h | 4,320 |
| 17 | 1.2.11 | Plan cost management |  | 9d | 2023-11-27 | 2023-12-07 | 16 | 0d | Financial Experts | 72h | 6,480 |
| 18 | 1.2.12 | Estimate costs |  | 7d | 2023-12-08 | 2023-12-18 | 17 | 0d | Financial Experts | 56h | 5,040 |
| 19 | 1.2.13 | Determine budget |  | 9d | 2023-12-19 | 2023-12-29 | 18 | 0d | Financial Experts | 72h | 6,480 |
| 20 | 1.2.14 | Develop a risk management plan |  | 10d | 2024-01-01 | 2024-01-12 | 19 | 0d | Financial Experts; Legal and Compliance Team | 160h | 14,400 |
| 21 | 1.2.15 | Develop a quality management plan |  | 7d | 2024-01-15 | 2024-01-23 | 20 | 0d | Project Manager | 56h | 5,040 |
| 22 | 1.2.16 | Develop a resource management plan |  | 7d | 2024-01-24 | 2024-02-01 | 21 | 0d | Project Manager | 56h | 5,040 |
| 23 | 1.3 | **Executing** |  | 187d | 2024-02-02 | 2024-10-21 | 6 | 0d |  | 3504h | 181,784 |
| 24 | 1.3.1 | **Create Proposal** |  | 17d | 2024-02-02 | 2024-02-26 | 22 | 0d |  | 108h | 5,720 |
| 25 | 1.3.1.1 | Conduct Market Research |  | 10d | 2024-02-02 | 2024-02-15 | 22 | 0d | Market Research | 80h | 3,200 |
| 26 | 1.3.1.2 | Consult with stakeholders |  | 5d | 2024-02-16 | 2024-02-22 | 25 | 0d | Project Manager | 20h | 1,800 |
| 27 | 1.3.1.3 | Develop Project Proposal |  | 2d | 2024-02-23 | 2024-02-26 | 26 | 0d | Project Manager | 8h | 720 |
| 28 | 1.3.1.4 | Proposal Finalized | milestone | 0d | 2024-02-26 | 2024-02-26 | 27 | 0d |  |  |  |

| ID | WBS | Task | Type | Duration | Start | Finish | Predecessors | Total slack | Free slack | Resources | Work | Cost |
| --- | --- | --- | --- | --- | --- | --- | --- | --- | --- | --- | --- | --- |
| 29 | 1.3.2 | **Obtain Approval** |  | 10d | 2024-02-27 | 2024-03-11 | 28 | 0d |  |  | 84h | 4,560 |
| 30 | 1.3.2.1 | Present Proposal to Stakeholders |  | 3d | 2024-02-27 | 2024-02-29 |  | 0d |  | Project Manager | 12h | 1,080 |
| 31 | 1.3.2.2 | Review by Accounting Team |  | 1d | 2024-03-01 | 2024-03-01 | 30 | 0d |  | Financial Experts; Payments Team | 16h | 1,040 |
| 32 | 1.3.2.3 | Review by Entrepreneurship Team |  | 1d | 2024-03-04 | 2024-03-04 | 31 | 0d |  | Entrepreneurship Team | 8h | 480 |
| 33 | 1.3.2.4 | Review by Guides Team |  | 1d | 2024-03-05 | 2024-03-05 | 32 | 0d |  | Guides Team | 8h | 240 |
| 34 | 1.3.2.5 | Review by News Team |  | 1d | 2024-03-06 | 2024-03-06 | 33 | 0d |  | News Team | 8h | 240 |
| 35 | 1.3.2.6 | Review by Payments Team |  | 1d | 2024-03-07 | 2024-03-07 | 34 | 0d |  | Payments Team | 8h | 320 |
| 36 | 1.3.2.7 | Review by Lead Designer |  | 1d | 2024-03-08 | 2024-03-08 | 35 | 0d |  | UI/UX Designers | 8h | 360 |
| 37 | 1.3.2.8 | Review by Software Development Team |  | 1d | 2024-03-11 | 2024-03-11 | 36 | 0d |  | Backend Software Developers; Frontend Software Developers | 16h | 800 |
| 38 | 1.3.2.9 | Approval Obtained | milestone | 0d | 2024-03-11 | 2024-03-11 | 37 | 0d |  |  |  |  |
| 39 | 1.3.3 | **Procurement of resources** |  | 24d | 2024-03-12 | 2024-04-12 | 29 | 0d |  |  | 144h | 6,560 |
| 40 | 1.3.3.1 | Consult with stakeholders |  | 2d | 2024-03-12 | 2024-03-13 |  | 0d |  | Project Manager | 8h | 720 |
| 41 | 1.3.3.2 | Identify vendors |  | 8d | 2024-03-14 | 2024-03-25 | 40 | 0d |  | Logistics Team; Market Research; Project Manager | 24h | 1,360 |
| 42 | 1.3.3.3 | Procure resources (cloud, hosting, data center, etc) |  | 14d | 2024-03-26 | 2024-04-12 | 41 | 0d |  | Logistics Team | 112h | 4,480 |
| 43 | 1.3.3.4 | Resources procured | milestone | 0d | 2024-04-12 | 2024-04-12 | 42 | 0d |  |  |  |  |
| 44 | 1.3.4 | **Design Application** |  | 23d | 2024-04-15 | 2024-05-15 | 43 | 0d |  |  | 904h | 46,584 |
| 45 | 1.3.4.1 | **Design Application Backend Features** |  | 14d | 2024-04-15 | 2024-05-02 | 43 | 123d |  |  | 672h | 36,960 |
| 46 | 1.3.4.1.1 | Design invoicing backend system, data, logic |  | 14d | 2024-04-15 | 2024-05-02 | 43 | 123d | 0d | Backend Software Developers | 112h | 6,160 |
| 47 | 1.3.4.1.2 | Design payments backend system, data, logic |  | 14d | 2024-04-15 | 2024-05-02 | 46SS | 123d |  | Backend Software Developers | 112h | 6,160 |
| 48 | 1.3.4.1.3 | Design accounting backend system, data, logic |  | 14d | 2024-04-15 | 2024-05-02 | 46SS | 123d |  | Backend Software Developers | 112h | 6,160 |
| 49 | 1.3.4.1.4 | Design mobile receipts backend system, data, logic |  | 14d | 2024-04-15 | 2024-05-02 | 46SS | 123d |  | Backend Software Developers | 112h | 6,160 |
| 50 | 1.3.4.1.5 | Design invoicing payroll system, data, logic |  | 14d | 2024-04-15 | 2024-05-02 | 46SS | 123d |  | Backend Software Developers | 112h | 6,160 |
| 51 | 1.3.4.1.6 | Design advisors backend system, data, logic |  | 14d | 2024-04-15 | 2024-05-02 | 46SS | 123d | 0d | Backend Software Developers | 112h | 6,160 |
| 52 | 1.3.4.1.7 | Backend Application Design Complete | milestone | 0d | 2024-05-02 | 2024-05-02 | 51 | 123d |  |  |  |  |

| ID | WBS | Task | Type | Duration | Start | Finish | Predecessors | Total slack | Resources | Work | Cost |
| --- | --- | --- | --- | --- | --- | --- | --- | --- | --- | --- | --- |
| 53 | 1.3.4.2 | **Design Application Frontend** |  | 23d | 2024-04-15 | 2024-05-15 | 43 | 0d |  | 232h | 9,624 |
| 54 | 1.3.4.2.1 | Design wireframes connecting all features based on market research |  | 10d | 2024-04-15 | 2024-04-26 | 43 | 0d | UI/UX Designers | 80h | 3,600 |
| 55 | 1.3.4.2.2 | Conduct usability testing |  | 6d | 2024-04-29 | 2024-05-06 | 54 | 0d | UI/UX Designers; Usability Testers | 96h | 3,504 |
| 56 | 1.3.4.2.3 | Refine wireframe prototypes |  | 7d | 2024-05-07 | 2024-05-15 | 55 | 0d | UI/UX Designers | 56h | 2,520 |
| 57 | 1.3.4.2.4 | Frontend application design complete | milestone | 0d | 2024-05-15 | 2024-05-15 | 56 | 0d |  |  |  |
| 58 | 1.3.4.3 | Application Design Complete | milestone | 0d | 2024-05-15 | 2024-05-15 | 57 | 0d |  |  |  |
| 59 | 1.3.5 | **Develop Application** |  | 26d | 2024-05-16 | 2024-06-20 | 58 | 0d |  | 768h | 35,200 |
| 60 | 1.3.5.1 | **Develop Backend** |  | 16d | 2024-05-16 | 2024-06-06 | 58 | 0d |  | 64h | 3,520 |
| 61 | 1.3.5.1.1 | **Develop Backend Features** |  | 16d | 2024-05-16 | 2024-06-06 | 58 | 0d |  | 48h | 2,640 |
| 62 | 1.3.5.1.1.1 | Develop invoicing |  | 16d | 2024-05-16 | 2024-06-06 | 58 | 0d | Backend Software Developers | 8h | 440 |
| 63 | 1.3.5.1.1.2 | Develop payments |  | 16d | 2024-05-16 | 2024-06-06 | 62SS | 0d | Backend Software Developers | 8h | 440 |
| 64 | 1.3.5.1.1.3 | Develop accounting |  | 16d | 2024-05-16 | 2024-06-06 | 62SS | 0d | Backend Software Developers | 8h | 440 |
| 65 | 1.3.5.1.1.4 | Develop mobile receipts |  | 16d | 2024-05-16 | 2024-06-06 | 62SS | 0d | Backend Software Developers | 8h | 440 |
| 66 | 1.3.5.1.1.5 | Develop payroll |  | 16d | 2024-05-16 | 2024-06-06 | 62SS | 0d | Backend Software Developers | 8h | 440 |
| 67 | 1.3.5.1.1.6 | Develop advisors |  | 16d | 2024-05-16 | 2024-06-06 | 62SS | 0d | Backend Software Developers | 8h | 440 |
| 68 | 1.3.5.1.2 | Develop Backend Pricing |  | 16d | 2024-05-16 | 2024-06-06 | 62SS | 0d | Backend Software Developers | 8h | 440 |
| 69 | 1.3.5.1.3 | Develop Backend Blog |  | 16d | 2024-05-16 | 2024-06-06 | 62SS | 0d | Backend Software Developers | 8h | 440 |
| 70 | 1.3.5.2 | **Develop Frontend** |  | 10d | 2024-06-07 | 2024-06-20 | 60 | 0d |  | 704h | 31,680 |
| 71 | 1.3.5.2.1 | **Develop Frontend Features** |  | 10d | 2024-06-07 | 2024-06-20 | 60 | 0d |  | 528h | 23,760 |
| 72 | 1.3.5.2.1.1 | Develop invoicing |  | 10d | 2024-06-07 | 2024-06-20 | 60 | 0d | Frontend Software Developers; UI/UX Designers | 88h | 3,960 |
| 73 | 1.3.5.2.1.2 | Develop payments |  | 10d | 2024-06-07 | 2024-06-20 | 72SS | 0d | Frontend Software Developers; UI/UX Designers | 88h | 3,960 |
| 74 | 1.3.5.2.1.3 | Develop accounting |  | 10d | 2024-06-07 | 2024-06-20 | 72SS | 0d | Frontend Software Developers; UI/UX Designers | 88h | 3,960 |
| 75 | 1.3.5.2.1.4 | Develop mobile receipts |  | 10d | 2024-06-07 | 2024-06-20 | 72SS | 0d | Frontend Software Developers; UI/UX Designers | 88h | 3,960 |
| 76 | 1.3.5.2.1.5 | Develop payroll |  | 10d | 2024-06-07 | 2024-06-20 | 72SS | 0d | Frontend Software Developers; UI/UX Designers | 88h | 3,960 |
| 77 | 1.3.5.2.1.6 | Develop advisors |  | 10d | 2024-06-07 | 2024-06-20 | 72SS | 0d | Frontend Software Developers; UI/UX Designers | 88h | 3,960 |
| 78 | 1.3.5.2.2 | Develop Frontend Pricing |  | 10d | 2024-06-07 | 2024-06-20 | 72SS | 0d | Frontend Software Developers; UI/UX Designers | 88h | 3,960 |
| 79 | 1.3.5.2.3 | Develop Frontend Blog |  | 10d | 2024-06-07 | 2024-06-20 | 72SS | 0d | Frontend Software Developers; UI/UX Designers | 88h | 3,960 |
| 80 | 1.3.5.3 | Application Development Complete | milestone | 0d | 2024-06-20 | 2024-06-20 | 70 | 0d |  |  |  |

| ID | WBS | Task | Type | Duration | Start | Finish | Predecessors | Total slack | Resources | Work | Cost |
| --- | --- | --- | --- | --- | --- | --- | --- | --- | --- | --- | --- |
| 81 | 1.3.6 | **Implement Security** |  | 37d | 2024-06-21 | 2024-08-12 | 80 | 0d |  | 592h | 39,960 |
| 82 | 1.3.6.1 | Implement 256-bit TLS encryption for data transmission/storage |  | 12d | 2024-06-21 | 2024-07-08 | 80 | 0d | Backend Software Developers; Security Experts | 192h | 12,960 |
| 83 | 1.3.6.2 | Gain PCI-DSS Compliance |  | 14d | 2024-07-09 | 2024-07-26 | 82 | 0d | Backend Software Developers; Security Experts | 224h | 15,120 |
| 84 | 1.3.6.3 | Develop Fraud Prevention |  | 11d | 2024-07-29 | 2024-08-12 | 83 | 0d | Backend Software Developers; Security Experts | 176h | 11,880 |
| 85 | 1.3.6.4 | Security implemented | milestone | 0d | 2024-08-12 | 2024-08-12 | 84 | 0d |  |  |  |
| 86 | 1.3.7 | **Testing** |  | 14d | 2024-08-13 | 2024-08-30 | 85 | 0d |  | 488h | 21,760 |
| 87 | 1.3.7.1 | Launch Test Deployment Environment |  | 14d | 2024-08-13 | 2024-08-30 | 85 | 0d | Testing Team | 8h | 320 |
| 88 | 1.3.7.2 | **Test Backend** |  | 12d | 2024-08-13 | 2024-08-28 | 87SS | 39d |  | 24h | 960 |
| 89 | 1.3.7.2.1 | Test Backend Features |  | 12d | 2024-08-13 | 2024-08-28 | 87SS | 39d | Testing Team | 8h | 320 |
| 90 | 1.3.7.2.2 | Test Backend Pricing |  | 1d | 2024-08-13 | 2024-08-13 | 87SS | 50d | Testing Team | 8h | 320 |
| 91 | 1.3.7.2.3 | Test Backend Blog |  | 12d | 2024-08-13 | 2024-08-28 | 87SS | 39d | Testing Team | 8h | 320 |
| 92 | 1.3.7.3 | **Test Frontend** |  | 14d | 2024-08-13 | 2024-08-30 | 87SS | 37d |  | 288h | 11,520 |
| 93 | 1.3.7.3.1 | Test Frontend Features |  | 14d | 2024-08-13 | 2024-08-30 | 87SS | 37d | Testing Team | 112h | 4,480 |
| 94 | 1.3.7.3.2 | Test Frontend Pricing |  | 11d | 2024-08-13 | 2024-08-27 | 87SS | 40d | Testing Team | 88h | 3,520 |
| 95 | 1.3.7.3.3 | Test Frontend Blog |  | 11d | 2024-08-13 | 2024-08-27 | 87SS | 40d | Testing Team | 88h | 3,520 |
| 96 | 1.3.7.4 | Test Security |  | 7d | 2024-08-13 | 2024-08-21 | 87SS | 44d | Security Experts; Testing Team | 112h | 6,720 |
| 97 | 1.3.7.5 | Test Server Load Handling |  | 7d | 2024-08-13 | 2024-08-21 | 87SS | 44d | Testing Team | 56h | 2,240 |
| 98 | 1.3.7.6 | Application Testing Complete | milestone | 0d | 2024-08-30 | 2024-08-30 | 87 | 0d | Testing Team |  |  |
| 99 | 1.3.8 | **Marketing and Promotional Materials** |  | 23d | 2024-09-02 | 2024-10-02 | 98 | 0d |  | 384h | 18,400 |
| 100 | 1.3.8.1 | Create advertisements |  | 7d | 2024-09-02 | 2024-09-10 | 98 | 0d | Marketing Team; Legal and Compliance Team; Market Research | 168h | 8,960 |
| 101 | 1.3.8.2 | Consult with stakeholders for advertisement approval |  | 5d | 2024-09-11 | 2024-09-17 | 100 | 0d | Marketing Team | 40h | 1,200 |
| 102 | 1.3.8.3 | Distribute material to third party vendors |  | 10d | 2024-09-18 | 2024-10-01 | 101 | 0d | Marketing Team; Third-Party Advertisers | 160h | 7,200 |
| 103 | 1.3.8.4 | Advertisements deployed |  | 1d | 2024-10-02 | 2024-10-02 | 102 | 0d | Legal and Compliance Team; Market Research | 16h | 1,040 |
| 104 | 1.3.8.5 | Marketing and Promotional Materials Complete | milestone | 0d | 2024-10-02 | 2024-10-02 | 103 | 0d |  |  |  |

| ID | WBS | Task | Type | Duration | Start | Finish | Predecessors | Total slack | Resources | Work | Cost |
| --- | --- | --- | --- | --- | --- | --- | --- | --- | --- | --- | --- |
| 105 | 1.3.9 | **Wave Apps Final Approval** |  | 13d | 2024-10-03 | 2024-10-21 | 104 | 0d |  | 32h | 3,040 |
| 106 | 1.3.9.1 | Discuss with industry stakeholders |  | 7d | 2024-10-03 | 2024-10-11 | 104 | 0d | Project Manager | 10h | 900 |
| 107 | 1.3.9.2 | Review by COO |  | 1d | 2024-10-14 | 2024-10-14 | 106 | 0d | Project Manager | 2h | 180 |
| 108 | 1.3.9.3 | Review by CTO |  | 1d | 2024-10-15 | 2024-10-15 | 107 | 0d | Project Manager | 2h | 180 |
| 109 | 1.3.9.4 | Review by CEO |  | 1d | 2024-10-16 | 2024-10-16 | 108 | 0d | Project Manager | 2h | 180 |
| 110 | 1.3.9.5 | Approval by Board |  | 3d | 2024-10-17 | 2024-10-21 | 109 | 0d | Project Manager; Board of Directors | 16h | 1,600 |
| 111 | 1.3.9.6 | Wave Apps Approved | milestone | 0d | 2024-10-21 | 2024-10-21 | 110 | 0d |  |  |  |
| 112 | 1.4 | **Monitoring & Controlling** |  | 187d | 2024-02-02 | 2024-10-21 | 23SS | 1d |  | 7.5h | 675 |
| 113 | 1.4.1 | Monitor and control project work |  | 187d | 2024-02-02 | 2024-10-21 | 23SS | 1d | Project Manager | 1.5h | 135 |
| 114 | 1.4.2 | Perform integrated change control |  | 187d | 2024-02-02 | 2024-10-21 | 23SS | 1d | Project Manager | 1.5h | 135 |
| 115 | 1.4.3 | Control quality |  | 187d | 2024-02-02 | 2024-10-21 | 23SS | 1d | Project Manager | 1.5h | 135 |
| 116 | 1.4.4 | Control risk |  | 187d | 2024-02-02 | 2024-10-21 | 23SS | 1d | Project Manager | 1.5h | 135 |
| 117 | 1.4.5 | Control resources |  | 187d | 2024-02-02 | 2024-10-21 | 23SS | 1d | Project Manager | 1.5h | 135 |
| 118 | 1.5 | **Closing** |  | 1d | 2024-10-22 | 2024-10-22 | 111 | 0d |  | 8h | 720 |
| 119 | 1.5.1 | Close project |  | 1d | 2024-10-22 | 2024-10-22 | 111 | 0d | Project Manager | 8h | 720 |
| 120 | 1.5.2 | Project Completed | milestone | 0d | 2024-10-22 | 2024-10-22 | 119 | 0d |  |  |  |
