# iPad10.9Development

Schedule from MS Project, 2023-08-01 to 2024-03-28, costs in $.

## Calendars

- Standard: Mon-Fri 08:00-12:00, 13:00-17:00; Sat-Sun off.

## Resources

| Resource | Rate | Notes |
| --- | --- | --- |
| James Muir (Project Manager) | 60 | James Muir is the internal Project Manager contracted by Apple to manage the iPad 10.9 development project. James works for an hourly rate of 60/hr and an overtime rate of 120/hr. / As Project Manager, James is responsible for creating the Project Management Plan and project structure for the project. In the Executing phase, the project manager is mostly divided between monitoring the work of the project and ensuring that the work is proceeding in an efficient manner, while at the same time performing most of the Responsibilities in the Monitoring and Controlling phase. The Project Manager will split their time between these two phases overwhelmingly toward the Executing phase. |
| Tamsyn Corey (Lead Designer) | 72.12 | Tamsyn Corey is the Lead Designer designated by Apple to develop the iPad 10.9. An internal employee, they are salaried at 150,000 dollars per year. / Tamsyn Corey is responsible for creating the central vision and features for the tablet. In this project, they are also responsible for creating the UI/UX Design of the various tablet features and ensuring the software and hardware features match the vision for the tablet. As such, they work throughout the Executing phase to coordinate the development teams, and handle all meetings with Stakeholders. |
| Hardware Development Team | 50.48 | The Hardware Development Team is a team of 4 individuals employeed by Apple, currently allocated towards developing the iPad 10.9. The average of their salaries is 105,000 dollars per year. They make up the main team for developing the hardware components of the tablet. / When their work is done, they resume work on other projects in the company. |
| Software Developer Team | 57.69 | The Software Development Team is a team of 5 individuals employeed by Apple, currently allocated towards developing the iPad 10.9. The average of their salaries is 120,000 dollars per year. They make up the main team for developing the software components of the tablet. / When their work is done, they resume work on other projects in the company. |
| Manufacturing Engineer Team | 43.27 | The Manufacturing Engineer Team responsible for the manufacturing process for the early rollout and tradeshow production of the iPad 10.9. As manufacturing is a complicated topic in itself, the process to manufacture the tablet is likely to be its own related project, the details of which are considered out of scope for this project. / The team of 3 engineers are salaried at 90,000 dollars per year. |
| Quality Assurance Team | 30 | The Quality Assurance Team is a team of mixed-working constractors hired part-time to test and verify compliance for prototype and pre-production devices. While the number of employees varies, they can work the total workload of two full-time employees at 30 dollars an hour. / The Quality Assurance Team responsible for testing the hardware and software components of the tablet. Quality Assurance itself likely has its own project schedule for finalizing approval, and will likely test for function, user approval and feedback, compliance with regulations, and more. These various topics are out of scope for this project, and are assumed to be covered as required by the Quality Assurance Lead and their team. |
| Shipping and Acquisition Fees |  | Costs for shipping, such as shipping project materials and components to the main office after they have been manufactured in a factory. |
| Meeting and Catering Costs |  | Cost required for miscellaneous meetings, such as room reservations and catering for meetings with stakeholders and upper management. |
| Manufacturing and Production Fees |  | Costs for production, including the materials, time, and equipment needed to produce hardware prototypes. |

## Schedule

| ID | WBS | Task | Type | Duration | Start | Finish | Predecessors | Total slack | Resources | Work | Cost |
| --- | --- | --- | --- | --- | --- | --- | --- | --- | --- | --- | --- |
| 1 | 1 | **Design iPad 10.9 by Eric Hanoun and Kyle Galway** |  | 173d | 2023-08-01 | 2024-03-28 |  | 0d |  | 4029.11h | 280,633.01 |
| 2 | 1.1 | **Initiation Phase** |  | 5d | 2023-08-01 | 2023-08-07 |  | 0d |  | 48h | 3,976.92 |
| 3 | 1.1.1 | Identify Stakeholders |  | 1d | 2023-08-01 | 2023-08-01 |  | 0d | James Muir (Project Manager) | 8h | 480 |
| 4 | 1.1.2 | Develop Project charter |  | 3d | 2023-08-02 | 2023-08-04 | 3 | 0d | James Muir (Project Manager) | 24h | 1,440 |
| 5 | 1.1.3 | Hold Kick-off Meeting |  | 1d | 2023-08-07 | 2023-08-07 | 4 | 0d | Tamsyn Corey (Lead Designer); James Muir (Project Manager); Meeting and Catering Costs [0.1%] | 16h | 2,056.92 |
| 6 | 1.1.4 | Initiation Phase Complete Milestone | milestone | 0d | 2023-08-07 | 2023-08-07 | 5 | 0d |  |  |  |
| 7 | 1.2 | **Planning Phase** |  | 36d | 2023-08-08 | 2023-09-26 | 2 | 0d |  | 279h | 16,740 |
| 8 | 1.2.1 | Develop Project Management Plan |  | 1w | 2023-08-08 | 2023-08-14 | 4 | 0d | James Muir (Project Manager) | 40h | 2,400 |
| 9 | 1.2.2 | **Complete Scope Management Planning** |  | 6d | 2023-08-15 | 2023-08-22 | 8 | 0d |  | 48h | 2,880 |
| 10 | 1.2.2.1 | Plan Scope Management |  | 2d | 2023-08-15 | 2023-08-16 |  | 0d | James Muir (Project Manager) | 16h | 960 |
| 11 | 1.2.2.2 | Collect Requirements |  | 1d | 2023-08-17 | 2023-08-17 | 10 | 0d | James Muir (Project Manager) | 8h | 480 |
| 12 | 1.2.2.3 | Define Project Scope |  | 1d | 2023-08-18 | 2023-08-18 | 11 | 0d | James Muir (Project Manager) | 8h | 480 |
| 13 | 1.2.2.4 | Create Work Breakdown Structure |  | 2d | 2023-08-21 | 2023-08-22 | 12 | 0d | James Muir (Project Manager) | 16h | 960 |
| 14 | 1.2.3 | **Complete Schedule Management Planning** |  | 7d | 2023-08-23 | 2023-08-31 | 9 | 0d |  | 56h | 3,360 |
| 15 | 1.2.3.1 | Plan Schedule Management |  | 2d | 2023-08-23 | 2023-08-24 |  | 0d | James Muir (Project Manager) | 16h | 960 |
| 16 | 1.2.3.2 | Define Activites |  | 1d | 2023-08-25 | 2023-08-25 | 15 | 0d | James Muir (Project Manager) | 8h | 480 |
| 17 | 1.2.3.3 | Sequence Activities |  | 1d | 2023-08-28 | 2023-08-28 | 16 | 0d | James Muir (Project Manager) | 8h | 480 |
| 18 | 1.2.3.4 | Estimate Activity Durations |  | 1d | 2023-08-29 | 2023-08-29 | 17 | 0d | James Muir (Project Manager) | 8h | 480 |
| 19 | 1.2.3.5 | Develop Schedule |  | 2d | 2023-08-30 | 2023-08-31 | 18 | 0d | James Muir (Project Manager) | 16h | 960 |
| 20 | 1.2.4 | **Complete Cost Management Planning** |  | 5d | 2023-09-01 | 2023-09-07 | 14 | 0d |  | 40h | 2,400 |
| 21 | 1.2.4.1 | Plan Cost Management |  | 2d | 2023-09-01 | 2023-09-04 |  | 0d | James Muir (Project Manager) | 16h | 960 |
| 22 | 1.2.4.2 | Estimate Costs |  | 1d | 2023-09-05 | 2023-09-05 | 21 | 0d | James Muir (Project Manager) | 8h | 480 |
| 23 | 1.2.4.3 | Determine Project Budget |  | 2d | 2023-09-06 | 2023-09-07 | 22 | 0d | James Muir (Project Manager) | 16h | 960 |
| 24 | 1.2.5 | Plan Stakeholder Engagement |  | 2d | 2023-09-08 | 2023-09-11 | 20, 3 | 0d | James Muir (Project Manager) | 16h | 960 |
| 25 | 1.2.6 | Plan Quality Management |  | 2d | 2023-09-12 | 2023-09-13 | 24 | 0d | James Muir (Project Manager) | 16h | 960 |

Notes:
- 1: This project is intended to cover the software and hardware design for the iPad10.9. This project covers the proposal, approval, software design, hardware design, and early manufacturing and rollout for tradeshows and demonstration purposes of the tablet.~ / The broader manufacturing for global rollout, demonstrations and displays at trade shows, and the advertising for this tablet fall beyond the scope of this project. These topics would be covered in one or more related projects after this project has concluded.~ / Topics in Scope of Project/ ·Creating Proposal~ / ·Obtaining Approval / ·Hardware Design~ / ·Software Design~ / ·Manufacturing of Early Prototypes~to Test Tablet Design / ·Verification of Tablet Prototypes by Quality Assurance / Topics not in Scope of Project~/ ·Advertising of Tablet~ / ·Global Manufacturing of Wide Rollout and Production~ / ·Specifics of Manufacturing Process~ / ·Market Research into Features of IPad 10.9~ / ·Post-release Support for IPad 10.9 after Global Release
- 2: The initiation phase is the starting phase of the project focused on creating the Project Charter, identifying the Project Stakeholders, and throwing a Kick-off Meeting to signify the formal beginning of the project. / The initiation phase short in duration, and mostly concerned the Project Manager's contributions. It can be expected to take between two and five percent of the project's total length.
- 7: The Planning Phase is the phase directly following the Initation phase. During this phase the Project Manager begins by creating the Project Management Plan and completing the Planning for the ten Project Management Knowledge Areas. An elongated Planning Phase is directly related to a smoother Executing Phase and a more successful project overall, and as such the Planning Phase can be expected to take around twenty percent of the total project's length. / In this specific project, the Knowledge Areas of Procurement, Resource, and Communications Management have been deemed less important to the project, and have been omited. Nonetheless, the project manager will include relevant areas of this Areas in the Project Management Plan. / While not necessary, related Knowledge Area tasks have been grouped as summary tasks for organization purposes.

| ID | WBS | Task | Type | Duration | Start | Finish | Predecessors | Total slack | Free slack | Constraint | Resources | Work | Cost |
| --- | --- | --- | --- | --- | --- | --- | --- | --- | --- | --- | --- | --- | --- |
| 26 | 1.2.7 | **Complete Risk Management Planning** |  | 9d | 2023-09-14 | 2023-09-26 | 25 | 0d |  |  |  | 63h | 3,780 |
| 27 | 1.2.7.1 | Plan Risk Management |  | 2d | 2023-09-14 | 2023-09-15 |  | 0d |  |  | James Muir (Project Manager) | 16h | 960 |
| 28 | 1.2.7.2 | Identify Risks |  | 1d | 2023-09-18 | 2023-09-18 | 27 | 0d |  |  | James Muir (Project Manager) | 8h | 480 |
| 29 | 1.2.7.3 | Perform Qualitative Risk Analysis |  | 2d | 2023-09-19 | 2023-09-20 | 28 | 0d |  | start no earlier than 2023-08-07 | James Muir (Project Manager) | 7h | 420 |
| 30 | 1.2.7.4 | Perform Quantitative Risk Analysis |  | 2d | 2023-09-20 | 2023-09-22 | 29 | 0d |  |  | James Muir (Project Manager) | 16h | 960 |
| 31 | 1.2.7.5 | Plan Risk Responses |  | 2d | 2023-09-22 | 2023-09-26 | 30 | 0d |  |  | James Muir (Project Manager) | 16h | 960 |
| 32 | 1.2.8 | Planning Phase Complete Milestone | milestone | 0d | 2023-09-26 | 2023-09-26 | 9, 26 | 0d |  |  |  |  |  |
| 33 | 1.3 | **Executing Phase** |  | 127d | 2023-09-26 | 2024-03-21 | 7 | 0d |  |  |  | 3543.1h | 248,390.87 |
| 34 | 1.3.1 | **Project Integration Management** |  | 127d | 2023-09-26 | 2024-03-21 |  | 0d |  |  |  | 899.1h | 53,946 |
| 35 | 1.3.1.1 | Direct and Manage Project Work |  | 127d | 2023-09-26 | 2024-03-21 | 8 | 0d |  | start no earlier than 2023-08-28 | James Muir (Project Manager) [85%] | 849.15h | 50,949 |
| 36 | 1.3.1.2 | Manage Project Knowledge |  | 127d | 2023-09-26 | 2024-03-21 | 35SS | 0d |  | start no earlier than 2023-08-03 | James Muir (Project Manager) [5%] | 49.95h | 2,997 |
| 37 | 1.3.2 | **Create Proposal** |  | 4d | 2023-09-27 | 2023-10-02 |  | 0d |  |  |  | 28h | 2,219.23 |
| 38 | 1.3.2.1 | Conduct Market Research |  | 4d | 2023-09-27 | 2023-10-02 |  | 0d |  |  | Tamsyn Corey (Lead Designer) [50%] | 16h | 1,153.85 |
| 39 | 1.3.2.2 | Consult with Company Stakeholders |  | 2d | 2023-09-27 | 2023-09-28 |  | 2d |  |  | Tamsyn Corey (Lead Designer) [50%]; Meeting and Catering Costs [0.1%] | 4h | 488.46 |
| 40 | 1.3.2.3 | Develop Project Proposal |  | 2d | 2023-09-29 | 2023-10-02 | 39SF, 38FF | 0d |  |  | Tamsyn Corey (Lead Designer) [50%] | 8h | 576.92 |
| 41 | 1.3.2.4 | Approval Finalized Milestone | milestone | 0d | 2023-10-02 | 2023-10-02 | 40 | 0d |  |  |  |  |  |
| 42 | 1.3.3 | **Obtain Approval** |  | 5d | 2023-10-02 | 2023-10-09 | 37 | 0d |  |  |  | 104h | 6,653.85 |
| 43 | 1.3.3.1 | Discuss with Company Stakeholders |  | 1d | 2023-10-02 | 2023-10-03 |  | 0d |  |  | Tamsyn Corey (Lead Designer); Meeting and Catering Costs [0.1%] | 8h | 1,576.92 |
| 44 | 1.3.3.2 | Review by Manufacturing Engineer Team |  | 4d | 2023-10-04 | 2023-10-09 | 43 | 0d |  |  | Manufacturing Engineer Team | 32h | 1,384.62 |
| 45 | 1.3.3.3 | Review by Hardware Development Team |  | 4d | 2023-10-04 | 2023-10-09 | 43 | 0d |  |  | Software Developer Team | 32h | 1,846.15 |
| 46 | 1.3.3.4 | Review by Software Development Team |  | 4d | 2023-10-04 | 2023-10-09 | 43 | 0d |  |  | Software Developer Team | 32h | 1,846.15 |
| 47 | 1.3.3.5 | Project Approval Obtained Milestone | milestone | 0d | 2023-10-09 | 2023-10-09 | 44, 45, 46 | 0d |  |  |  |  |  |
| 48 | 1.3.4 | **Design the Tablet** |  | 95d | 2023-10-10 | 2024-02-19 | 42 | 0d |  |  |  | 2160h | 134,294.87 |
| 49 | 1.3.4.1 | Coordinate Design Teams |  | 95d | 2023-10-10 | 2024-02-19 | 42 | 23d | 0d |  | Tamsyn Corey (Lead Designer) | 760h | 54,807.69 |

Notes:
- 33: The Executing Phase is the longest phase and the phase in which the majority of work is completed on the Project. While often the focus of the project, the elongated Planning Phase will shorten and streamline the Executing Phase, causing it to take around seventy percent of the duration of the project. / The Executing Phase most strongly involves all of the project's various workers. The Lead Designer leads the Hardware and Software Development teams, while afterwards the Manufacturing Team produces and assembles the components for the tablet prototypes to be tested by the Quality Assurance Team, which is neccessary to ensure the successful completion of the project before it can be formally closed.
- 34: This summary task involves the Project Management performed by the Project Manager, which will together take up around ninety percent of the Project Manager's work during the Executing Phase and Monitoring and Controlling Phase.
- 37: Before the Project Work can begin, the Lead Designer must create the proposal for the company stakeholders. This proposal will list the intended features of the final deliverable, intended to show to the stakeholders to present a clear and transparent analysis of the potential risks and benefits for undergoing the project.
- 40: Develop the Project Proposal has Start-to-Finish relationship with its predecessors, Conduct Market Research and Consult with Company Stakeholders. The Project Proposal cannot finish before the Stakeholders have been consulted and some amount of research has been done.
- 42: Once the Proposal has been created, the relevant stakeholders must be consulted to obtain its approval. This also involves consulting the Hardware and Software Development Teams to obtain the feedback on the viability of the deliverable's features.
- 48: After the Proposal is obtained, the work for the Project is divided into the Software and Hardware components of the tablet, which will each have a specific team lead together by the Lead Designer. / Because the Hardware and Software Design teams are separate in purpose, the Lead Designer must carefully coordinate and encourage coomunications and progress between teams to ensure that neither team delivers work which is incompatible with the other.

| ID | WBS | Task | Duration | Start | Finish | Predecessors | Total slack | Free slack | Resources | Work | Cost |
| --- | --- | --- | --- | --- | --- | --- | --- | --- | --- | --- | --- |
| 50 | 1.3.4.2 | **Hardware Design** | 80d | 2023-10-10 | 2024-01-29 |  | 15d |  |  | 640h | 35,641.03 |
| 51 | 1.3.4.2.1 | **Design Liquid Retina Display** | 10d | 2023-10-10 | 2023-10-23 |  | 15d | 0d |  | 80h | 4,038.46 |
| 52 | 1.3.4.2.1.1 | Design Screen Blueprints | 5d | 2023-10-10 | 2023-10-16 |  | 15d | 0d | Hardware Development Team | 40h | 2,019.23 |
| 53 | 1.3.4.2.1.2 | Create Screen Prototype | 3d | 2023-10-17 | 2023-10-19 | 52 | 15d | 0d | Hardware Development Team | 24h | 1,211.54 |
| 54 | 1.3.4.2.1.3 | Test Screen Prototype | 2d | 2023-10-20 | 2023-10-23 | 53 | 15d |  | Hardware Development Team | 16h | 807.69 |
| 55 | 1.3.4.2.2 | **Design 12MP Ultra Wide Camera** | 12d | 2023-10-24 | 2023-11-08 | 51 | 15d | 0d |  | 96h | 4,846.15 |
| 56 | 1.3.4.2.2.1 | Design Camera Blueprints | 5d | 2023-10-24 | 2023-10-30 |  | 15d | 0d | Hardware Development Team | 40h | 2,019.23 |
| 57 | 1.3.4.2.2.2 | Create Camera Prototype | 2d | 2023-10-31 | 2023-11-01 | 56 | 15d | 0d | Hardware Development Team | 16h | 807.69 |
| 58 | 1.3.4.2.2.3 | Test Camera Prototype | 5d | 2023-11-02 | 2023-11-08 | 57 | 15d |  | Hardware Development Team | 40h | 2,019.23 |
| 59 | 1.3.4.2.3 | **Design Wifi 6 Adapter** | 12d | 2023-11-09 | 2023-11-24 | 55 | 15d | 0d |  | 96h | 4,846.15 |
| 60 | 1.3.4.2.3.1 | Design Wi-Fi 6 Adapter Blueprints | 5d | 2023-11-09 | 2023-11-15 |  | 15d | 0d | Hardware Development Team | 40h | 2,019.23 |
| 61 | 1.3.4.2.3.2 | Create Wi-Fi 6 Adapter Prototype | 2d | 2023-11-16 | 2023-11-17 | 60 | 15d | 0d | Hardware Development Team | 16h | 807.69 |
| 62 | 1.3.4.2.3.3 | Test Wi-Fi 6 Adapter Prototype | 5d | 2023-11-20 | 2023-11-24 | 61 | 15d |  | Hardware Development Team | 40h | 2,019.23 |
| 63 | 1.3.4.2.4 | **Design Touch ID Scanner** | 11d | 2023-11-27 | 2023-12-11 | 59 | 15d | 0d |  | 88h | 4,442.31 |
| 64 | 1.3.4.2.4.1 | Design Touch ID Scanner Blueprints | 5d | 2023-11-27 | 2023-12-01 |  | 15d | 0d | Hardware Development Team | 40h | 2,019.23 |
| 65 | 1.3.4.2.4.2 | Create Touch ID Scanner Prototype | 2d | 2023-12-04 | 2023-12-05 | 64 | 15d | 0d | Hardware Development Team | 16h | 807.69 |
| 66 | 1.3.4.2.4.3 | Test Touch ID Scanner Prototype | 4d | 2023-12-06 | 2023-12-11 | 65 | 15d |  | Hardware Development Team | 32h | 1,615.38 |
| 67 | 1.3.4.2.5 | **Design Apple Pencil** | 12d | 2023-12-12 | 2023-12-27 | 63 | 15d | 0d |  | 96h | 4,846.15 |
| 68 | 1.3.4.2.5.1 | Design Apple Pencil Blueprints | 5d | 2023-12-12 | 2023-12-18 |  | 15d | 0d | Hardware Development Team | 40h | 2,019.23 |
| 69 | 1.3.4.2.5.2 | Create Apple Pencil Prototyps | 2d | 2023-12-19 | 2023-12-20 | 68 | 15d | 0d | Hardware Development Team | 16h | 807.69 |
| 70 | 1.3.4.2.5.3 | Test Apple Pencil Prototype | 5d | 2023-12-21 | 2023-12-27 | 69 | 15d |  | Hardware Development Team | 40h | 2,019.23 |
| 71 | 1.3.4.2.6 | **Design Magic Keyboard Folio** | 12d | 2023-12-28 | 2024-01-12 | 67 | 15d | 0d |  | 96h | 4,846.15 |
| 72 | 1.3.4.2.6.1 | Design Magic Keyboard Folio and Trackboard Blueprints | 5d | 2023-12-28 | 2024-01-03 |  | 15d | 0d | Hardware Development Team | 40h | 2,019.23 |
| 73 | 1.3.4.2.6.2 | Create Magic Keyboard Folio and Trackpad Prototype | 2d | 2024-01-04 | 2024-01-05 | 72 | 15d | 0d | Hardware Development Team | 16h | 807.69 |
| 74 | 1.3.4.2.6.3 | Test Magic Keyboard Folio and Trackpad Prototype | 5d | 2024-01-08 | 2024-01-12 | 73 | 15d |  | Hardware Development Team | 40h | 2,019.23 |

Notes:
- 50: The Hardware Design for the project includes developing the mechanical and physical components of the tablet which will come together to create the tablet. At this stage, these components will be constructed out of disconnected components which are not viable for an assembled tablet, but will describe the final pieces will could be assembled to create the tablet prototypes.

| ID | WBS | Task | Type | Duration | Start | Finish | Predecessors | Total slack | Free slack | Constraint | Resources | Work | Cost |
| --- | --- | --- | --- | --- | --- | --- | --- | --- | --- | --- | --- | --- | --- |
| 75 | 1.3.4.2.7 | **Performance Benchmarking Design** |  | 11d | 2024-01-15 | 2024-01-29 | 71 | 15d | 0d |  |  | 88h | 7,775.64 |
| 76 | 1.3.4.2.7.1 | Obtain Tablet Hardware Components |  | 1d | 2024-01-15 | 2024-01-15 |  | 15d | 0d | start no earlier than 2023-11-17 | Hardware Development Team; Shipping and Acquisition Fees [0.1%] | 8h | 3,737.18 |
| 77 | 1.3.4.2.7.2 | Develop A14 Bionic Chip Processor Prototype |  | 5d | 2024-01-16 | 2024-01-22 | 76 | 15d | 0d |  | Hardware Development Team | 40h | 2,019.23 |
| 78 | 1.3.4.2.7.3 | Benchmark Processor Prototype |  | 5d | 2024-01-23 | 2024-01-29 | 77 | 15d |  |  | Hardware Development Team | 40h | 2,019.23 |
| 79 | 1.3.4.2.8 | Hardware Design Complete Milestone | milestone | 0d | 2024-01-29 | 2024-01-29 | 75 | 15d |  |  |  |  |  |
| 80 | 1.3.4.3 | **Software Design** |  | 95d | 2023-10-10 | 2024-02-19 |  | 0d |  |  |  | 760h | 43,846.15 |
| 81 | 1.3.4.3.1 | **Develop iPadOS** |  | 30d | 2023-10-10 | 2023-11-20 |  | 0d |  |  |  | 240h | 13,846.15 |
| 82 | 1.3.4.3.1.1 | Design UI/UX for Operating System GUI |  | 1w | 2023-10-10 | 2023-10-16 |  | 0d |  |  | Software Developer Team | 40h | 2,307.69 |
| 83 | 1.3.4.3.1.2 | Program OS |  | 1mo | 2023-10-17 | 2023-11-13 | 82 | 0d |  |  | Software Developer Team | 160h | 9,230.77 |
| 84 | 1.3.4.3.1.3 | Optimize OS Performance |  | 1w | 2023-11-14 | 2023-11-20 | 83 | 0d |  |  | Software Developer Team | 40h | 2,307.69 |
| 85 | 1.3.4.3.2 | **Design Canvas APP** |  | 20d | 2023-11-21 | 2023-12-18 | 81 | 0d |  |  |  | 160h | 9,230.77 |
| 86 | 1.3.4.3.2.1 | Design UI/UX for Canvas |  | 1w | 2023-11-21 | 2023-11-27 |  | 0d |  |  | Software Developer Team | 40h | 2,307.69 |
| 87 | 1.3.4.3.2.2 | Program Canvas App |  | 2w | 2023-11-28 | 2023-12-11 | 86 | 0d |  |  | Software Developer Team | 80h | 4,615.38 |
| 88 | 1.3.4.3.2.3 | Test Canvas App |  | 1w | 2023-12-12 | 2023-12-18 | 87 | 0d |  |  | Software Developer Team | 40h | 2,307.69 |
| 89 | 1.3.4.3.3 | **Design Augmented Reality Integration Software** |  | 30d | 2023-12-19 | 2024-01-29 | 85, 55 | 0d |  |  |  | 240h | 13,846.15 |
| 90 | 1.3.4.3.3.1 | Design AR Integration Software Architecture |  | 2w | 2023-12-19 | 2024-01-01 |  | 0d |  |  | Software Developer Team | 80h | 4,615.38 |
| 91 | 1.3.4.3.3.2 | Program AR Integration Software |  | 2w | 2024-01-02 | 2024-01-15 | 90 | 0d |  |  | Software Developer Team | 80h | 4,615.38 |
| 92 | 1.3.4.3.3.3 | Test AR Integration Software |  | 2w | 2024-01-16 | 2024-01-29 | 91 | 0d |  |  | Software Developer Team | 80h | 4,615.38 |
| 93 | 1.3.4.3.4 | **Design App Store Support** |  | 15d | 2024-01-30 | 2024-02-19 | 89 | 0d |  |  |  | 120h | 6,923.08 |
| 94 | 1.3.4.3.4.1 | Design App Store Container Architecture |  | 1w | 2024-01-30 | 2024-02-05 |  | 0d |  |  | Software Developer Team | 40h | 2,307.69 |
| 95 | 1.3.4.3.4.2 | Program App Store Container Application |  | 1w | 2024-02-06 | 2024-02-12 | 94 | 0d |  |  | Software Developer Team | 40h | 2,307.69 |
| 96 | 1.3.4.3.4.3 | Test Compatibility with App Store Web Application |  | 1w | 2024-02-13 | 2024-02-19 | 95 | 0d |  |  | Software Developer Team | 40h | 2,307.69 |
| 97 | 1.3.4.3.5 | Software Design Complete Milestone | milestone | 0d | 2024-02-19 | 2024-02-19 | 93 | 0d |  |  |  |  |  |
| 98 | 1.3.4.4 | Tablet Design Complete Milestone | milestone | 0d | 2024-02-19 | 2024-02-19 | 50, 80, 49FF | 23d |  |  |  |  |  |

Notes:
- 76: While most Hardware Components will be fabricated from prexisting sensors, items, and materials, or otherwise available to the Hardware Development Team ahead of time, the device components including processor, memory, motherboard, and so on will be obtained from external providers specialized for these purposes, and so qualify a unique purchasing and shipping fee. After these components have been obtained, a specialized varient can be developed optimized to the tablet's specifications.
- 80: The Software Design team is responsible for creating the programs and applications for the iPad 10.9. This includes creating the Operating System for the tablet, and verifying that applications developed for the tablet are functional and that preexisting applications are compatible with the new device environment.
- 89: The AR Integration Software is the supporting architecture and API links needed for the tablet to support AR applications through the use of the 12MP Ultra Wide Front Camera. / Because this software is required to integrate with the Camera, it only be started once development on the camera has completed. This is required to ensure that the software developed is capable of supporting the camera which will be integrated into the tablet. If the work proceeds on the AR integration software, but the camera goes through a major rework, much of the software development may be rendered unusable or be required to be majorly refactored. / While they output of any integrated camera is standardized and therefore unllikely to complete break the functionality of the AR Integration Software, an understanding of the Tablet's camera will allow the Software Designer to optimize the AR Integration Software in a manner which they would be unable to do if they did not have precise knowledge of the camera's specifications and functionality.
- 93: The iPad 10.9 willl use same Web Application as the previous iPad models. This means that instead of developing a Native iOS application, much of the development work can be recycled. / Nonetheless, the container for the App Store Web Application must be created in the iPad 10.9's native environment, and it must be tested to ensure that it is compatible with the app store.

| ID | WBS | Task | Type | Duration | Start | Finish | Predecessors | Total slack | Free slack | Constraint | Resources | Work | Cost |
| --- | --- | --- | --- | --- | --- | --- | --- | --- | --- | --- | --- | --- | --- |
| 99 | 1.3.5 | **Produce Tablet Prototypes** |  | 8d | 2024-02-20 | 2024-02-29 | 50, 80 | 0d |  |  |  | 112h | 44,076.92 |
| 100 | 1.3.5.1 | **Manufacture Prototype Tablets** |  | 6d | 2024-02-20 | 2024-02-27 |  | 0d |  |  |  | 96h | 42,384.62 |
| 101 | 1.3.5.1.1 | Meet with Manufacturing Team Lead |  | 1d | 2024-02-20 | 2024-02-20 |  | 0d |  |  | Tamsyn Corey (Lead Designer); Manufacturing Engineer Team | 16h | 923.08 |
| 102 | 1.3.5.1.2 | Manufacture Liquid Retina Display |  | 1w | 2024-02-20 | 2024-02-27 | 101 | 0d |  |  | Manufacturing Engineer Team [40%]; Manufacturing and Production Fees [0.1%] | 16h | 10,692.31 |
| 103 | 1.3.5.1.3 | Manufacture Magic Keyboard Folio and Trackpad |  | 1w | 2024-02-20 | 2024-02-27 | 101 | 0d |  |  | Manufacturing Engineer Team [30%]; Manufacturing and Production Fees [0.1%] | 12h | 3,519.23 |
| 104 | 1.3.5.1.4 | Manufacture Wi-fi 6 Adapter |  | 1w | 2024-02-20 | 2024-02-27 | 101 | 0d |  |  | Manufacturing Engineer Team [30%]; Manufacturing and Production Fees [0.1%] | 12h | 4,519.23 |
| 105 | 1.3.5.1.5 | Manufacture Touch ID Scanner |  | 1w | 2024-02-20 | 2024-02-27 | 101 | 0d |  |  | Manufacturing Engineer Team [30%]; Manufacturing and Production Fees [0.1%] | 12h | 8,519.23 |
| 106 | 1.3.5.1.6 | Manufacture Apple Pencil |  | 1w | 2024-02-20 | 2024-02-27 | 101 | 0d |  |  | Manufacturing Engineer Team [30%]; Manufacturing and Production Fees [0.1%] | 12h | 1,519.23 |
| 107 | 1.3.5.1.7 | Manufacture 12MP Ultra Wide Camera |  | 1w | 2024-02-21 | 2024-02-27 | 101 | 0d |  |  | Manufacturing Engineer Team [40%]; Manufacturing and Production Fees [0.1%] | 16h | 12,692.31 |
| 108 | 1.3.5.1.8 | Parts Manufacturing Complete Milestone | milestone | 0d | 2024-02-27 | 2024-02-27 | 102, 103, 104, 105, 106, 107 | 0d |  |  |  |  |  |
| 109 | 1.3.5.2 | Assemble Tablets from Components |  | 2d | 2024-02-28 | 2024-02-29 | 100 | 0d |  |  | Manufacturing Engineer Team; Shipping and Acquisition Fees [0.1%] | 16h | 1,692.31 |
| 110 | 1.3.5.3 | Manufacturing Complete Milestone | milestone | 0d | 2024-02-29 | 2024-02-29 | 109 | 15d |  |  |  |  |  |
| 111 | 1.3.6 | **Obtain Prototype Quality Assurance Approval** |  | 15d | 2024-03-01 | 2024-03-21 | 109 | 0d |  |  |  | 240h | 7,200 |
| 112 | 1.3.6.1 | Obtain Hardware Performance Verification |  | 1w | 2024-03-01 | 2024-03-07 |  | 0d |  |  | Quality Assurance Team | 40h | 1,200 |
| 113 | 1.3.6.2 | Obtain Software Performance Verification |  | 1w | 2024-03-01 | 2024-03-07 |  | 0d |  |  | Quality Assurance Team | 40h | 1,200 |
| 114 | 1.3.6.3 | Obtain Regulatory Compliance Verification |  | 2w | 2024-03-08 | 2024-03-21 | 112, 113 | 0d |  |  | Quality Assurance Team | 80h | 2,400 |
| 115 | 1.3.6.4 | Obtain Test User Approval |  | 2w | 2024-03-08 | 2024-03-21 | 112, 113 | 0d |  |  | Quality Assurance Team | 80h | 2,400 |
| 116 | 1.3.6.5 | Quality Assurance Verification Obtained Milestone | milestone | 0d | 2024-03-21 | 2024-03-21 | 115 | 0d |  |  |  |  |  |
| 117 | 1.3.7 | Executing Phase Complete Milestone | milestone | 0d | 2024-03-21 | 2024-03-21 | 111, 35, 36 | 0d |  |  |  |  |  |
| 118 | 1.4 | **Monitoring and Controlling Phase** |  | 127d | 2023-09-26 | 2024-03-21 | 7 | 0d |  |  |  | 79.01h | 4,740.6 |
| 119 | 1.4.1 | Monitor and Control Project Work |  | 127d | 2023-09-27 | 2024-03-21 | 35FF, 36FF | 0d |  | start no earlier than 2023-09-26 | James Muir (Project Manager) [2%] | 19.98h | 1,198.8 |
| 120 | 1.4.2 | Perform integrated Change Control |  | 127d | 2023-09-27 | 2024-03-21 | 119FF | 0d |  |  | James Muir (Project Manager) [1%] | 9.99h | 599.4 |
| 121 | 1.4.3 | Monitor Risks |  | 5d | 2023-09-26 | 2023-10-03 | 31, 37FF | 122d |  |  | James Muir (Project Manager) [1%] | 0.4h | 24 |
| 122 | 1.4.4 | Validate Scope |  | 4d | 2023-10-03 | 2023-10-09 | 13, 42FF | 118d | 3d |  | James Muir (Project Manager) [2%] | 0.64h | 38.4 |
| 123 | 1.4.5 | Control Scope |  | 8d | 2023-09-26 | 2023-10-06 | 122SF, 37FF | 119d |  |  | James Muir (Project Manager) [1%] | 0.64h | 38.4 |
| 124 | 1.4.6 | Control Schedule |  | 96d | 2023-10-09 | 2024-02-19 | 19, 48FF | 23d |  |  | James Muir (Project Manager) [2%] | 15.2h | 912 |
| 125 | 1.4.7 | Control Quality |  | 96d | 2023-10-09 | 2024-02-19 | 25, 48FF | 23d |  |  | James Muir (Project Manager) [1%] | 7.6h | 456 |
| 126 | 1.4.8 | Control Costs |  | 105d | 2023-10-10 | 2024-03-04 | 21, 48SS, 100FF | 13d |  |  | James Muir (Project Manager) [2%] | 16.64h | 998.4 |
| 127 | 1.4.9 | Monitor Stakeholder Engagement |  | 100d | 2023-10-03 | 2024-02-19 | 24, 42SS, 48FF | 23d |  |  | James Muir (Project Manager) [1%] | 7.92h | 475.2 |
| 128 | 1.4.10 | Monitoring and Controlling Phase Complete Milestone | milestone | 0d | 2024-03-21 | 2024-03-21 | 120 | 0d |  |  |  |  |  |

Notes:
- 99: While the broad manufacturing of the tablet is not within scope of this project, an number of early prototypes must be created to verify the success of the tablet's hardware and software features. This requires a manufacturing team to produce and later assemble these prototypes, before they are sent away to be tested.
- 100: Each component for the Prototype Tablets will be required to be manufacturing in house by Apple's manufacturing team. Because these early prototypes are not yet in wide-production (a topic which falls outside the scope of the project) they will require a greater-than-usual manufacturing price to represent the equipment materials, and manual oversight required to create them.
- 111: In order to verify the success of the project, the produced prototypes must be tested by the Quality Assurance Team. In the event that a critical error is detected in the prototypes, additional work must be conducted by the Development Teams to address these errors. It is for this reason that an acknowledgement of the Quality Assurance process, even if only slight, is included in the scope of this project. / After the prototypes have been approved, the project can proceed into the closing phase.
- 118: The Monitoring and Controlling Phase occurs in parallel with the Executing Phase, during which time the Project Manager observes the work on the project and makes carefully changes as required to ensure that the project proceeds smoothly and efficiently. / While most of the Project Manager's time is spent in the executing phase, around 10% of their time will be spent on Monitoring and Controlling. In additional, the various activities of this phase will be active during the durations of the Executing tasks most relevant to them.
- 121: The Risks associated with this project are of most importance are of most importance when creating the Proposal for the project, which must later be presented to the Project Stakeholders and approved.
- 122: The Scope of the Project is primarily approved by the Project Stakeholders during the Proposal Approval activities.
- 123: The Scope of the tablet is most relevant when creating obtaining approval of the project Proposal, as it is during these activities that the list of features for the tablet will be considered and finalized. Once the Proposal has been approved, changes to the scope will require an additional approval process by the stakeholders outside the scope and structure of this project.
- 124: The Schedule is mostly relevant when leading the various Development teams on the design of the tablet, which only occurs after the proposal has been approved. Once the Manufacturing and Quality Assurance teams take over, their schedules are less controllable and obervable to the Project Manager.
- 125: Quality is relevant during the tablet's Design, when the Leader Designer and their teams are creating the tablet and deciding on its specifications and features.
- 126: Costs for the Project are relevant primarily while Designing the tablet and Manufacturing the tablet prototypes.
- 127: Stakeholder Engagement is required from the time the Stakeholders are presented the Proposal to when the Design of the Tablet is complete.

| ID | WBS | Task | Type | Duration | Start | Finish | Predecessors | Total slack | Resources | Work | Cost |
| --- | --- | --- | --- | --- | --- | --- | --- | --- | --- | --- | --- |
| 129 | 1.5 | **Closing Phase** |  | 5d | 2024-03-21 | 2024-03-28 | 33, 118 | 0d |  | 80h | 6,784.62 |
| 130 | 1.5.1 | Close Project or Phase |  | 1w | 2024-03-21 | 2024-03-28 | 120 | 0d | Tamsyn Corey (Lead Designer); James Muir (Project Manager); Meeting and Catering Costs [0.1%] | 80h | 6,784.62 |
| 131 | 1.5.2 | Project Complete Milestone | milestone | 0d | 2024-03-28 | 2024-03-28 | 130 | 0d |  |  |  |

Notes:
- 129: The Closing Phase is the final phae of the project, where the project is formally closed and ended. The Lead Designer and Project Manager document the project outcomes and hold a final meeting between stakeholders. Like the Initation Phase, the Closing Phase can be expected to take between two and five percent of the project.
