# Children's Book Schedule

Schedule from MS Project, 2023-04-10 to 2024-01-12, status date 2023-11-06, costs in $, A marks actual dates.
Lucerne Publishing

## Calendars

- Standard: Mon-Fri 08:00-12:00, 13:00-17:00; Sat-Sun off.
- Mon-Wed Task Calendar: Mon-Wed 08:00-12:00, 13:00-17:00; Thu-Sun off.

## Resources

| Resource | Group | Unit | Rate |
| --- | --- | --- | --- |
| Carole Poland | Editorial |  | 52.5 |
| Copyeditors | Editorial |  | 45 |
| Dan Jump | Design |  | 75.5 |
| Hany Morcos | Editorial |  | 38.75 |
| Jane Dow | Editorial |  | 63.25 |
| Jun Cao | Editorial |  | 42 |
| Luis Sousa | Design |  | 70 |
| Printing Service | Production |  |  |
| Travel | Other |  |  |
| Tad Orman | Other |  |  |
| Color Setting Services | Production |  |  |
| Advance proofs | Production | copies | 15 |

## Schedule

| ID | WBS | Task | Type | Duration | Start | Finish | Predecessors | Complete | Remaining | Baseline start | Baseline finish | Baseline duration | Total slack | Constraint | Deadline | Resources | Work | Actual work | Cost | Baseline cost | Actual cost | Editorial Focus |
| --- | --- | --- | --- | --- | --- | --- | --- | --- | --- | --- | --- | --- | --- | --- | --- | --- | --- | --- | --- | --- | --- | --- |
| 1 | 1 | **Editorial staff meeting** |  | 60.12d | 2023-04-17 08:00 A | 2023-07-10 09:00 |  | 54% | 27.75d | 2023-04-17 08:00 | 2023-07-10 09:00 | 60.12d | 134.88d |  |  |  | 45.5h | 24.5h | 2,223 | 2,223 | 1,197 |  |
| 2 | 1.1 | Editorial staff meeting 1 |  | 1h | 2023-04-17 08:00 A | 2023-04-17 09:00 A |  | 100% |  | 2023-04-17 08:00 | 2023-04-17 09:00 | 1h |  | start no earlier than 2023-04-17 08:00 |  | Carole Poland; Jun Cao; Hany Morcos; Dan Jump [50%] | 3.5h | 3.5h | 171 | 171 | 171 |  |
| 3 | 1.2 | Editorial staff meeting 2 |  | 1h | 2023-04-24 08:00 A | 2023-04-24 09:00 A |  | 100% |  | 2023-04-24 08:00 | 2023-04-24 09:00 | 1h |  | start no earlier than 2023-04-24 08:00 |  | Carole Poland; Jun Cao; Hany Morcos; Dan Jump [50%] | 3.5h | 3.5h | 171 | 171 | 171 |  |
| 4 | 1.3 | Editorial staff meeting 3 |  | 1h | 2023-05-01 08:00 A | 2023-05-01 09:00 A |  | 100% |  | 2023-05-01 08:00 | 2023-05-01 09:00 | 1h |  | start no earlier than 2023-05-01 08:00 |  | Carole Poland; Jun Cao; Hany Morcos; Dan Jump [50%] | 3.5h | 3.5h | 171 | 171 | 171 |  |
| 5 | 1.4 | Editorial staff meeting 4 |  | 1h | 2023-05-08 08:00 A | 2023-05-08 09:00 A |  | 100% |  | 2023-05-08 08:00 | 2023-05-08 09:00 | 1h |  | start no earlier than 2023-05-08 08:00 |  | Carole Poland; Jun Cao; Hany Morcos; Dan Jump [50%] | 3.5h | 3.5h | 171 | 171 | 171 |  |
| 6 | 1.5 | Editorial staff meeting 5 |  | 1h | 2023-05-15 08:00 A | 2023-05-15 09:00 A |  | 100% |  | 2023-05-15 08:00 | 2023-05-15 09:00 | 1h |  | start no earlier than 2023-05-15 08:00 |  | Carole Poland; Jun Cao; Hany Morcos; Dan Jump [50%] | 3.5h | 3.5h | 171 | 171 | 171 |  |
| 7 | 1.6 | Editorial staff meeting 6 |  | 1h | 2023-05-22 08:00 A | 2023-05-22 09:00 A |  | 100% |  | 2023-05-22 08:00 | 2023-05-22 09:00 | 1h |  | start no earlier than 2023-05-22 08:00 |  | Carole Poland; Jun Cao; Hany Morcos; Dan Jump [50%] | 3.5h | 3.5h | 171 | 171 | 171 |  |
| 8 | 1.7 | Editorial staff meeting 7 |  | 1h | 2023-05-29 08:00 A | 2023-05-29 09:00 A |  | 100% |  | 2023-05-29 08:00 | 2023-05-29 09:00 | 1h |  | start no earlier than 2023-05-29 08:00 |  | Carole Poland; Jun Cao; Hany Morcos; Dan Jump [50%] | 3.5h | 3.5h | 171 | 171 | 171 |  |
| 9 | 1.8 | Editorial staff meeting 8 |  | 1h | 2023-06-05 08:00 | 2023-06-05 09:00 |  |  |  | 2023-06-05 08:00 | 2023-06-05 09:00 | 1h | 159d | start no earlier than 2023-06-05 08:00 |  | Carole Poland; Jun Cao; Hany Morcos; Dan Jump [50%] | 3.5h |  | 171 | 171 |  |  |
| 10 | 1.9 | Editorial staff meeting 9 |  | 1h | 2023-06-12 08:00 | 2023-06-12 09:00 |  |  |  | 2023-06-12 08:00 | 2023-06-12 09:00 | 1h | 154d | start no earlier than 2023-06-12 08:00 |  | Carole Poland; Jun Cao; Hany Morcos; Dan Jump [50%] | 3.5h |  | 171 | 171 |  |  |
| 11 | 1.10 | Editorial staff meeting 10 |  | 1h | 2023-06-19 08:00 | 2023-06-19 09:00 |  |  |  | 2023-06-19 08:00 | 2023-06-19 09:00 | 1h | 149d | start no earlier than 2023-06-19 08:00 |  | Carole Poland; Jun Cao; Hany Morcos; Dan Jump [50%] | 3.5h |  | 171 | 171 |  |  |
| 12 | 1.11 | Editorial staff meeting 11 |  | 1h | 2023-06-26 08:00 | 2023-06-26 09:00 |  |  |  | 2023-06-26 08:00 | 2023-06-26 09:00 | 1h | 144d | start no earlier than 2023-06-26 08:00 |  | Carole Poland; Jun Cao; Hany Morcos; Dan Jump [50%] | 3.5h |  | 171 | 171 |  |  |
| 13 | 1.12 | Editorial staff meeting 12 |  | 1h | 2023-07-03 08:00 | 2023-07-03 09:00 |  |  |  | 2023-07-03 08:00 | 2023-07-03 09:00 | 1h | 139d | start no earlier than 2023-07-03 08:00 |  | Carole Poland; Jun Cao; Hany Morcos; Dan Jump [50%] | 3.5h |  | 171 | 171 |  |  |
| 14 | 1.13 | Editorial staff meeting 13 |  | 1h | 2023-07-10 08:00 | 2023-07-10 09:00 |  |  |  | 2023-07-10 08:00 | 2023-07-10 09:00 | 1h | 134d | start no earlier than 2023-07-10 08:00 |  | Carole Poland; Jun Cao; Hany Morcos; Dan Jump [50%] | 3.5h |  | 171 | 171 |  |  |
| 15 | 2 | **Acquisition** |  | 39d | 2023-04-10 08:00 A | 2023-06-01 17:00 A |  | 100% |  | 2023-04-10 08:00 | 2023-05-31 08:00 | 37d |  |  |  |  | 468h | 468h | 18,804 | 18,804 | 18,804 |  |
| 16 | 2.1 | Manuscript received | milestone | 0d | 2023-04-10 08:00 A | 2023-04-10 08:00 A |  | 100% |  | 2023-04-10 08:00 | 2023-04-10 08:00 | 0d |  |  |  |  |  |  |  |  |  |  |
| 17 | 2.2 | Content edit |  | 15d | 2023-04-12 08:00 A | 2023-05-08 10:00 A | 16 | 100% |  | 2023-04-10 08:00 | 2023-05-04 10:00 | 15d |  |  |  | Carole Poland | 120h | 120h | 6,300 | 6,300 | 6,300 | Full developmental edit |
| 18 | 2.3 | Original art review |  | 10.25d | 2023-05-01 10:00 A | 2023-05-15 12:00 A | 17FS-5d | 100% |  | 2023-04-27 10:00 | 2023-05-11 12:00 | 10.25d |  |  |  | Hany Morcos; Jane Dow | 164h | 164h | 8,364 | 8,364 | 8,364 |  |
| 19 | 2.4 | Author review of content edit |  | 13.5d | 2023-05-15 13:00 A | 2023-06-01 17:00 A | 17, 18 | 100% |  | 2023-05-11 13:00 | 2023-05-30 17:00 | 13.5d |  |  |  | Tad Orman; Copyeditors | 184h | 184h | 4,140 | 4,140 | 4,140 | Incorp must-fix issues |
| 20 | 2.5 | Handoff to Editorial | milestone | 0d | 2023-06-01 17:00 A | 2023-06-01 17:00 A | 19 | 100% |  | 2023-05-31 08:00 | 2023-05-31 08:00 | 0d |  |  | 2023-06-03 08:00 | Carole Poland |  |  |  |  |  |  |
| 21 | 3 | **Editorial** |  | 28.5d | 2023-06-02 08:00 A | 2023-07-12 12:00 A | 15 | 100% |  | 2023-05-31 08:00 | 2023-07-10 13:00 | 28.5d |  |  |  |  | 411h | 411h | 16,183 | 16,183 | 16,183 |  |
| 22 | 3.1 | Organize manuscript for copyedit |  | 5d | 2023-06-02 08:00 A | 2023-06-08 17:00 A |  | 100% |  | 2023-05-31 08:00 | 2023-06-06 17:00 | 5d |  |  |  | Hany Morcos; Dan Jump [50%] | 63h | 63h | 3,213 | 3,213 | 3,213 | Address outstanding line edit issues |
| 23 | 3.2 | Copyedit |  | 10.75d | 2023-06-09 08:00 A | 2023-06-23 15:00 A | 22 | 100% |  | 2023-06-07 08:00 | 2023-06-21 15:00 | 10.75d |  |  |  | Copyeditors [200%] | 188h | 188h | 8,460 | 8,460 | 8,460 | Style Guide compliance |
| 24 | 3.3 | Author review of copyedit |  | 10d | 2023-06-23 15:00 A | 2023-07-07 15:00 A | 23 | 100% |  | 2023-06-21 15:00 | 2023-07-05 15:00 | 10d |  |  |  | Tad Orman; Copyeditors [25%] | 100h | 100h | 900 | 900 | 900 | Incorp must-fix issues |
| 25 | 3.4 | Copyedit incorp |  | 5.12d | 2023-07-05 10:00 A | 2023-07-12 12:00 A | 24FS-2.5% | 100% |  | 2023-07-03 10:00 | 2023-07-10 12:00 | 5.12d |  |  |  | Carole Poland; Dan Jump [50%] | 60h | 60h | 3,610 | 3,610 | 3,610 | Incorp must-fix issues |
| 26 | 3.5 | Handoff to Production | milestone | 0d | 2023-07-12 12:00 A | 2023-07-12 12:00 A | 25 | 100% |  | 2023-07-10 13:00 | 2023-07-10 13:00 | 0d |  |  |  | Hany Morcos |  |  |  |  |  |  |

| ID | WBS | Task | Type | Duration | Start | Finish | Predecessors | Complete | Remaining | Baseline start | Baseline finish | Baseline duration | Total slack | Free slack | Constraint | Calendar | Resources | Work | Actual work | Cost | Baseline cost | Actual cost |
| --- | --- | --- | --- | --- | --- | --- | --- | --- | --- | --- | --- | --- | --- | --- | --- | --- | --- | --- | --- | --- | --- | --- |
| 27 | 4 | **Design and Production** |  | 88.5d | 2023-07-12 13:00 A | 2023-11-13 17:00 | 21 | 69% | 27.07d | 2023-07-10 13:00 | 2023-10-13 17:00 | 69.5d | 0d |  |  |  |  | 1294h | 958h | 62,456.5 | 49,017.5 | 42,177.5 |
| 28 | 4.1 | Set pages |  | 15d | 2023-07-12 13:00 A | 2023-08-02 12:00 A |  | 100% |  | 2023-07-10 13:00 | 2023-07-31 12:00 | 15d |  |  |  |  | Jane Dow | 120h | 120h | 7,590 | 7,590 | 7,590 |
| 29 | 4.2 | Interior illustration design |  | 17.5d | 2023-07-12 13:00 A | 2023-08-04 17:00 A | 28SS | 100% |  | 2023-07-10 13:00 | 2023-08-02 17:00 | 17.5d |  |  |  |  | Luis Sousa; Hany Morcos | 278h | 278h | 15,147.5 | 15,147.5 | 15,147.5 |
| 30 | 4.3 | **1st Pages review** |  | 56d | 2023-08-07 08:00 A | 2023-10-23 17:00 | 29 | 80% | 11.43d | 2023-08-03 08:00 | 2023-10-13 17:00 | 52d | 0d |  |  |  |  | 660h | 560h | 26,280 | 26,280 | 19,440 |
| 31 | 4.3.1 | Proofread and index |  | 20d | 2023-08-07 08:00 A | 2023-09-05 17:00 A |  | 100% |  | 2023-08-03 08:00 | 2023-09-01 17:00 | 20d |  |  | start no earlier than 2023-07-21 08:00 |  | Tad Orman; Copyeditors | 320h | 320h | 7,200 | 7,200 | 7,200 |
| 32 | 4.3.2 | Incorporate 1st Pages review |  | 19d | 2023-09-06 08:00 A | 2023-10-02 17:00 A | 31 | 100% |  | 2023-09-05 08:00 | 2023-09-29 17:00 | 19d |  |  |  |  | Hany Morcos; Dan Jump [50%] | 240h | 240h | 12,240 | 12,240 | 12,240 |
| 33 | 4.3.3 | Send proofed pages to Production | milestone | 0d | 2023-10-02 17:00 | 2023-10-02 17:00 | 32 |  |  | 2023-09-29 17:00 | 2023-09-29 17:00 | 0d | 5d |  |  |  | Hany Morcos |  |  |  |  |  |
| 34 | 4.3.4 | Enter page corrections and index |  | 5d | 2023-10-10 08:00 | 2023-10-16 17:00 | 33 |  |  | 2023-10-02 08:00 | 2023-10-06 17:00 | 5d | 0d |  | start no earlier than 2023-10-10 08:00 |  | Jane Dow; Dan Jump [50%] | 60h |  | 4,040 | 4,040 |  |
| 35 | 4.3.5 | Cover design |  | 5d | 2023-10-17 08:00 | 2023-10-23 17:00 | 34 |  |  | 2023-10-09 08:00 | 2023-10-13 17:00 | 5d | 0d |  |  |  | Luis Sousa | 40h |  | 2,800 | 2,800 |  |
| 36 | 4.4 | **2nd Pages review** |  | 15d | 2023-10-24 08:00 | 2023-11-13 17:00 |  |  |  |  |  |  | 0d |  |  |  |  | 148h |  | 7,605 | -0 |  |
| 37 | 4.4.1 | Proof and review |  | 10d | 2023-10-24 08:00 | 2023-11-06 17:00 | 35 |  |  |  |  |  | 0d |  |  |  | Hany Morcos | 68h |  | 3,060 | -0 |  |
| 38 | 4.4.2 | Send proofed pages to Production | milestone | 0d | 2023-11-06 17:00 | 2023-11-06 17:00 | 37 |  |  |  |  |  | 0d |  |  |  | Hany Morcos |  |  |  | -0 |  |
| 39 | 4.4.3 | Final review |  | 5d | 2023-11-07 08:00 | 2023-11-13 17:00 | 38 |  |  |  |  |  | 0d |  |  |  | Jane Dow; Hany Morcos [50%]; Carole Poland [50%]; Advance proofs [20 copies] | 80h |  | 4,545 | -0 |  |
| 40 | 4.5 | **Design book's companion website** |  | 10d | 2023-10-24 08:00 | 2023-11-06 17:00 | 30 |  |  |  |  |  | 5d |  |  |  |  | 88h |  | 5,834 | -0 |  |
| 41 | 4.5.1 | Create mockup |  | 4.5d | 2023-10-24 08:00 | 2023-11-02 17:00 |  |  |  |  |  |  | 5d | 0d |  |  | Luis Sousa; Hany Morcos | 48h |  | 2,610 | -0 |  |
| 42 | 4.5.2 | Review with author |  | 2d | 2023-11-03 08:00 | 2023-11-06 17:00 | 41 |  |  |  |  |  | 5d |  |  |  | Luis Sousa; Tad Orman; Travel [0.1%]; Dan Jump [50%] | 40h |  | 3,224 | -0 |  |
| 43 | 5 | **Color prep and printing** |  | 44d | 2023-11-14 08:00 | 2024-01-12 17:00 | 40 |  |  |  |  |  | 0d |  |  |  |  | 328h |  | 5,310 | -0 |  |
| 44 | 5.1 | Send to color house |  | 1d | 2023-11-14 08:00 | 2023-11-14 17:00 | 36 |  |  |  |  |  | 0d |  |  | Mon-Wed Task Calendar | Hany Morcos | 8h |  | 310 | -0 |  |
| 45 | 5.2 | Generate proofs |  | 10d | 2023-11-15 08:00 | 2023-11-28 17:00 | 44 |  |  |  |  |  | 0d |  |  |  | Color Setting Services | 80h |  | 5,000 | -0 |  |
| 46 | 5.3 | Print and ship |  | 30d | 2023-12-04 08:00 | 2024-01-12 17:00 | 45FS+3d |  |  |  |  |  | 0d |  |  |  | Printing Service | 240h |  |  | -0 |  |
| 47 | 6 | **Book launch prep** |  | 22d | 2023-11-15 08:00 | 2023-12-14 17:00 |  |  |  |  |  |  | 21d |  |  |  |  | 212h |  | 9,442 | -0 |  |
| 48 | 6.1 | Launch planning |  | 5d | 2023-11-15 08:00 | 2023-11-21 17:00 | 44 |  |  |  |  |  | 21d | 0d |  |  | Carole Poland [50%]; Jane Dow | 36h |  | 2,062 | -0 |  |
| 49 | 6.2 | Assign launch team members |  | 1d | 2023-11-22 08:00 | 2023-11-22 17:00 | 48 |  |  |  |  |  | 21d | 0d |  |  | Carole Poland | 8h |  | 420 | -0 |  |
| 50 | 6.3 | Complete author questionnaire |  | 5d | 2023-11-23 08:00 | 2023-11-29 17:00 | 49 |  |  |  |  |  | 21d | 0d |  |  | Hany Morcos; Tad Orman; Travel [0.1%] | 80h |  | 3,550 | -0 |  |
| 51 | 6.4 | Schedule author interviews |  | 1d | 2023-11-30 08:00 | 2023-11-30 17:00 | 50 |  |  |  |  |  | 21d | 0d |  |  | Hany Morcos | 8h |  | 310 | -0 |  |
| 52 | 6.5 | Design and order marketing material |  | 10d | 2023-12-01 08:00 | 2023-12-14 17:00 | 51 |  |  |  |  |  | 21d |  |  |  | Hany Morcos | 80h |  | 3,100 | -0 |  |
