# Children's Gourmet Cookbook

Schedule from MS Project, 2023-07-17 to 2023-11-08, status date 2023-06-05, costs in $.
Lucerne Publishing

## Calendars

- Standard: Mon-Fri 08:00-12:00, 13:00-17:00; Sat-Sun off.

## Resources

| Resource | Rate |
| --- | --- |
| John Evans | 62 |
| Katie Jordan | 48 |
| Robin Wood | 44 |
| William Flash | 55 |
| Carole Poland | 52.5 |
| Printing Service |  |
| Color Setting Services |  |
| Copyeditors |  |

## Schedule

| ID | WBS | Task | Type | Duration | Start | Finish | Predecessors | Baseline start | Baseline finish | Baseline duration | Total slack | Free slack | Constraint | Resources | Work | Cost | Baseline cost |
| --- | --- | --- | --- | --- | --- | --- | --- | --- | --- | --- | --- | --- | --- | --- | --- | --- | --- |
| 1 | 1 | **Acquisition** |  | 33d | 2023-07-17 | 2023-08-30 |  | 2023-07-16 | 2023-08-17 | 27d | 0d |  |  |  | 232h | 12,180 | 10,500 |
| 2 | 1.1 | Manuscript received | milestone | 0d | 2023-07-17 | 2023-07-17 |  | 2023-07-16 | 2023-07-16 | 0d | 2d |  |  | Carole Poland |  |  |  |
| 3 | 1.2 | Content edit |  | 29d | 2023-07-19 | 2023-08-30 | 2 | 2023-07-16 | 2023-08-17 | 25d | 0d |  | start no earlier than 2023-07-19 | Carole Poland | 232h | 12,180 | 10,500 |
| 4 | 1.3 | Handoff to Editorial | milestone | 0d | 2023-08-30 | 2023-08-30 | 3 | 2023-08-17 | 2023-08-17 | 0d | 0d |  |  | Carole Poland |  |  |  |
| 5 | 2 | **Editorial** |  | 30d | 2023-08-31 | 2023-10-11 | 1 | 2023-08-20 | 2023-09-28 | 30d | 0d |  |  |  | 240h | 3,520 | 3,520 |
| 6 | 2.1 | Organize manuscript for copyedit |  | 5d | 2023-08-31 | 2023-09-06 |  | 2023-08-17 | 2023-08-24 | 5d | 0d |  |  | Robin Wood | 40h | 1,760 | 1,760 |
| 7 | 2.2 | Copyedit |  | 20d | 2023-09-07 | 2023-10-04 | 6 | 2023-08-27 | 2018-09-21 | 20d | 0d |  |  | Copyeditors | 160h |  |  |
| 8 | 2.3 | Copyedit incorp |  | 5d | 2023-10-05 | 2023-10-11 | 7 | 2023-09-24 | 2018-09-28 | 5d | 0d |  |  | Robin Wood | 40h | 1,760 | 1,760 |
| 9 | 2.4 | Handoff to Production | milestone | 0d | 2023-10-11 | 2023-10-11 | 8 | 2023-09-28 | 2018-09-28 | 0d | 0d |  |  | Robin Wood |  |  |  |
| 10 | 3 | **Design and Production** |  | 20d | 2023-08-31 | 2023-09-27 | 5SS | 2023-08-20 | 2023-09-14 | 20d | 10d |  |  |  | 320h | 16,160 | 16,160 |
| 11 | 3.1 | Cover design |  | 5d | 2023-08-31 | 2023-09-06 |  | 2023-08-27 | 2023-08-24 | 5d | 10d | 0d |  | William Flash | 40h | 2,200 | 2,200 |
| 12 | 3.2 | Set pages |  | 10d | 2023-09-07 | 2023-09-20 | 11 | 2023-08-27 | 2023-09-07 | 10d | 10d | 0d |  | Robin Wood; Katie Jordan | 160h | 7,360 | 7,360 |
| 13 | 3.3 | Interior illustration design |  | 15d | 2023-09-07 | 2023-09-27 | 12SS | 2023-08-27 | 2023-09-14 | 15d | 10d |  |  | William Flash | 120h | 6,600 | 6,600 |
| 14 | 4 | **Pages review** |  | 20d | 2023-10-12 | 2023-11-08 | 10, 5 | 2023-10-01 | 2023-10-26 | 20d | 0d |  |  |  | 280h | 14,580 | 14,580 |
| 15 | 4.1 | Proofread and index |  | 10d | 2023-10-12 | 2023-10-25 |  | 2023-10-01 | 2023-10-12 | 10d | 0d |  |  | John Evans; Katie Jordan | 160h | 8,800 | 8,800 |
| 16 | 4.2 | Incorporate 1st Pages review |  | 5d | 2023-10-26 | 2023-11-01 | 15 | 2023-10-15 | 2023-10-19 | 5d | 0d |  |  | Carole Poland | 40h | 2,100 | 2,100 |
| 17 | 4.3 | Send proofed pages to Production | milestone | 0d | 2023-11-01 | 2023-11-01 | 16 | 2023-10-19 | 2023-10-19 | 0d | 0d |  |  | Robin Wood |  |  |  |
| 18 | 4.4 | Enter page corrections and index |  | 5d | 2023-11-02 | 2023-11-08 | 17 | 2023-10-22 | 2023-10-26 | 5d | 0d |  |  | Katie Jordan; Robin Wood | 80h | 3,680 | 3,680 |
| 19 | 4.5 | Send to print service | milestone | 0d | 2023-11-08 | 2023-11-08 | 18 | 2023-10-26 | 2023-10-26 | 0d | 0d |  |  |  |  |  |  |
