# Children's Gourmet Cookbook

Schedule from MS Project, 2023-07-17 to 2023-11-06, status date 2023-09-14, costs in $, A marks actual dates.
Lucerne Publishing

## Calendars

- Standard: Mon-Fri 08:00-12:00, 13:00-17:00; Sat-Sun off.

## Resources

| Resource | Rate |
| --- | --- |
| John Evans | 62 |
| Katie Jordan | 48 |
| Robin Wood | 44 |
| William Flash | 55 |
| Carole Poland | 52.5 |
| Printing Service |  |
| Color Setting Services |  |
| Copyeditors |  |

## Schedule

| ID | WBS | Task | Type | Duration | Start | Finish | Predecessors | Complete | Baseline start | Baseline finish | Baseline duration | Total slack | Free slack | Resources | Work | Actual work | Cost | Baseline cost | Actual cost |
| --- | --- | --- | --- | --- | --- | --- | --- | --- | --- | --- | --- | --- | --- | --- | --- | --- | --- | --- | --- |
| 1 | 1 | **Acquisition** |  | 31d | 2023-07-17 A | 2023-08-28 A |  | 100% | 2018-07-16 | 2018-08-21 | 27d |  |  |  | 232h | 232h | 12,180 | 10,500 | 12,180 |
| 2 | 1.1 | Manuscript received | milestone | 0d | 2023-07-17 A | 2023-07-17 A |  | 100% | 2018-07-16 | 2018-07-16 | 0d |  |  | Carole Poland |  |  |  |  |  |
| 3 | 1.2 | Content edit |  | 29d | 2023-07-17 A | 2023-08-28 A | 2 | 100% | 2018-07-16 | 2018-08-21 | 25d |  |  | Carole Poland | 232h | 232h | 12,180 | 10,500 | 12,180 |
| 4 | 1.3 | Handoff to Editorial | milestone | 0d | 2023-08-28 A | 2023-08-28 A | 3 | 100% | 2018-08-21 | 2018-08-21 | 0d |  |  | Carole Poland |  |  |  |  |  |
| 5 | 2 | **Editorial** |  | 30d | 2023-08-29 | 2023-10-09 | 1 |  | 2018-08-22 | 2018-10-02 | 30d | 0d |  |  | 240h |  | 3,520 | 3,520 |  |
| 6 | 2.1 | Organize manuscript for copyedit |  | 5d | 2023-08-29 | 2023-09-04 |  |  | 2018-08-22 | 2018-08-28 | 5d | 0d |  | Robin Wood | 40h |  | 1,760 | 1,760 |  |
| 7 | 2.2 | Copyedit |  | 20d | 2023-09-05 | 2023-10-02 | 6 |  | 2018-08-29 | 2018-09-25 | 20d | 0d |  | Copyeditors | 160h |  |  |  |  |
| 8 | 2.3 | Copyedit incorp |  | 5d | 2023-10-03 | 2023-10-09 | 7 |  | 2018-09-26 | 2018-10-02 | 5d | 0d |  | Robin Wood | 40h |  | 1,760 | 1,760 |  |
| 9 | 2.4 | Handoff to Production | milestone | 0d | 2023-10-09 | 2023-10-09 | 8 |  | 2018-10-02 | 2018-10-02 | 0d | 0d |  | Robin Wood |  |  |  |  |  |
| 10 | 3 | **Design and Production** |  | 20d | 2023-08-29 | 2023-09-25 | 5SS |  | 2018-08-22 | 2018-09-18 | 20d | 10d |  |  | 320h |  | 16,160 | 16,160 |  |
| 11 | 3.1 | Cover design |  | 5d | 2023-08-29 | 2023-09-04 |  |  | 2018-08-22 | 2018-08-28 | 5d | 10d | 0d | William Flash | 40h |  | 2,200 | 2,200 |  |
| 12 | 3.2 | Set pages |  | 10d | 2023-09-05 | 2023-09-18 | 11 |  | 2018-08-29 | 2018-09-11 | 10d | 10d | 0d | Robin Wood; Katie Jordan | 160h |  | 7,360 | 7,360 |  |
| 13 | 3.3 | Interior illustration design |  | 15d | 2023-09-05 | 2023-09-25 | 12SS |  | 2018-08-29 | 2018-09-18 | 15d | 10d |  | William Flash | 120h |  | 6,600 | 6,600 |  |
| 14 | 4 | **Pages review** |  | 20d | 2023-10-10 | 2023-11-06 | 10, 5 |  | 2018-10-03 | 2018-10-30 | 20d | 0d |  |  | 280h |  | 14,580 | 14,580 |  |
| 15 | 4.1 | Proofread and index |  | 10d | 2023-10-10 | 2023-10-23 |  |  | 2018-10-03 | 2018-10-16 | 10d | 0d |  | John Evans; Katie Jordan | 160h |  | 8,800 | 8,800 |  |
| 16 | 4.2 | Incorporate 1st Pages review |  | 5d | 2023-10-24 | 2023-10-30 | 15 |  | 2018-10-17 | 2018-10-23 | 5d | 0d |  | Carole Poland | 40h |  | 2,100 | 2,100 |  |
| 17 | 4.3 | Send proofed pages to Production | milestone | 0d | 2023-10-30 | 2023-10-30 | 16 |  | 2018-10-23 | 2018-10-23 | 0d | 0d |  | Robin Wood |  |  |  |  |  |
| 18 | 4.4 | Enter page corrections and index |  | 5d | 2023-10-31 | 2023-11-06 | 17 |  | 2018-10-24 | 2018-10-30 | 5d | 0d |  | Katie Jordan; Robin Wood | 80h |  | 3,680 | 3,680 |  |
| 19 | 4.5 | Send to print service | milestone | 0d | 2023-11-06 | 2023-11-06 | 18 |  | 2018-10-30 | 2018-10-30 | 0d | 0d |  |  |  |  |  |  |  |
