# New book launch

Schedule from MS Project, 2023-01-09 to 2023-02-28, costs in $.
New book launch schedule
Lucerne Publishing
New children's book for spring release

## Calendars

- Standard: Mon-Fri 08:00-12:00, 13:00-17:00; Sat-Sun off. Exceptions (off unless hours are given): 2023-01-25 (Staff at morale event).

## Resources

| Resource | Rate | Notes |
| --- | --- | --- |
| Jun Cao | 42 |  |
| Sharon Salavaria | 27.5 | Sharons standard pay rate is adjusted for her half-time work schedule. |
| Toby Nixon | 67.5 | Toby worked on launch campaigns for Toni Poes previous two books. |
| Toni Poe |  |  |
| Zac Woodall | 55 |  |
| Copyeditors | 45 |  |
| Travel |  |  |
| Carole Poland | 52.5 |  |
| Dan Jump | 75.5 |  |
| Hany Morcos | 38.75 |  |
| Jane Dow | 55 |  |
| John Evans | 69.5 |  |
| Katie Jordan | 48 |  |
| Luis Sousa | 70 |  |
| Printing Service |  |  |
| Robin Wood | 44 |  |
| Vikas Jain | 22 |  |
| William Flash |  |  |

## Schedule

| ID | WBS | Task | Type | Duration | Start | Finish | Predecessors | Total slack | Free slack | Resources | Work | Cost |
| --- | --- | --- | --- | --- | --- | --- | --- | --- | --- | --- | --- | --- |
| 1 | 1 | **Planning Phase** |  | 11d | 2023-01-09 | 2023-01-23 |  | 0d |  |  | 248h | 11,900 |
| 2 | 1.1 | Assign launch team members |  | 1d | 2023-01-09 | 2023-01-09 |  | 0d |  | Carole Poland | 8h | 420 |
| 3 | 1.2 | Complete author questionnaire |  | 1w | 2023-01-10 | 2023-01-16 | 2 | 5d |  | Toni Poe | 40h |  |
| 4 | 1.3 | Schedule author interviews |  | 1w | 2023-01-09 | 2023-01-16 | 2 | 5d |  | Jun Cao | 40h | 1,680 |
| 5 | 1.4 | Design and order marketing material |  | 2w | 2023-01-10 | 2023-01-23 | 2 | 0d |  | Toby Nixon; Zac Woodall | 160h | 9,800 |
| 6 | 1.5 | Planning complete! | milestone | 0d | 2023-01-23 | 2023-01-23 | 5 | 0d |  |  |  |  |
| 7 | 2 | **Internal Launch Phase** |  | 13d | 2023-01-24 | 2023-02-10 | 1 | 0d |  |  | 284h | 13,942 |
| 8 | 2.1 | Kickoff book launch meeting |  | 1d | 2023-01-24 | 2023-01-24 |  | 0d |  | Sharon Salavaria [50%]; Toby Nixon | 12h | 650 |
| 9 | 2.2 | Prepare book P&L statement |  | 2d | 2023-01-26 | 2023-01-27 | 8 | 10d |  | Carole Poland | 16h | 840 |
| 10 | 2.2 | Plan author's travel itinerary |  | 6d | 2023-01-26 | 2023-02-02 | 8 | 6d |  | Jane Dow | 48h | 2,640 |
| 11 | 2.3 | Channel Sales prep |  | 1w | 2023-01-26 | 2023-02-01 | 8 | 0d |  | Zac Woodall; Hany Morcos | 80h | 3,750 |
| 12 | 2.4 | Complete book launch form |  | 2d | 2023-02-02 | 2023-02-03 | 11 | 5d |  | Toby Nixon; Vikas Jain | 32h | 1,432 |
| 13 | 2.5 | Prepare book sales kit |  | 1w | 2023-02-02 | 2023-02-08 | 8, 11 | 0d |  | Hany Morcos; Zac Woodall | 80h | 3,750 |
| 14 | 2.6 | Distribute internal marketing material |  | 2d | 2023-02-09 | 2023-02-10 | 13 | 0d |  | Zac Woodall | 16h | 880 |
| 15 | 3 | **Public Launch Phase** |  | 12d | 2023-02-13 | 2023-02-28 | 7 | 0d |  |  | 280h | 13,352 |
| 16 | 3.1 | **Author travel and appearances** |  | 2d | 2023-02-13 | 2023-02-14 |  | 10d |  |  | 16h | 800 |
| 17 | 3.1.1 | Author radio interview |  | 1d | 2023-02-13 | 2023-02-13 |  | 10d | 0d | Toni Poe | 8h |  |
| 18 | 3.1.2 | Author reading and signing at book fair |  | 1d | 2023-02-14 | 2023-02-14 | 17 | 10d |  | Toni Poe; Travel [0.1%] | 8h | 800 |
| 19 | 3.2 | Distribute advance copies |  | 2d | 2023-02-13 | 2023-02-14 |  | 10d |  | Vikas Jain; Toby Nixon | 32h | 1,432 |
| 20 | 3.3 | Distribute book sales kit |  | 2d | 2023-02-13 | 2023-02-14 |  | 0d |  | Zac Woodall | 16h | 880 |
| 21 | 3.4 | Coordinate magazine feature articles |  | 7d | 2023-02-15 | 2023-02-23 | 20 | 3d |  | Zac Woodall | 56h | 3,080 |
| 22 | 3.5 | Launch public web portal for book |  | 1w | 2023-02-15 | 2023-02-21 | 20 | 0d |  | Toby Nixon; Vikas Jain | 80h | 3,580 |
| 23 | 3.6 | Launch social media programs for book |  | 1w | 2023-02-22 | 2023-02-28 | 22 | 0d |  | Toby Nixon; Vikas Jain | 80h | 3,580 |
| 24 | 3.7 | Launch complete! | milestone | 0d | 2023-02-28 | 2023-02-28 | 21, 22, 23 | 0d |  |  |  |  |

Notes:
- 19: Get recipient list from publicist
